# Тронин

Schedule from MS Project, 2017-10-02 to 2017-11-17, costs in ₽, A marks actual dates.

## Calendars

- Стандартный: Mon-Fri 09:00-13:00, 14:00-18:00; Sat-Sun off.

## Resources

| Resource | Group | Rate |
| --- | --- | --- |
| Иванов | Аналитик | 1500 |
| Петров | Программист | 1000 |
| Новиков | Программист | 1000 |
| Королев | Тестер | 1000 |
| Лицензия на UML-редактор |  | 25000 |

## Schedule

| ID | WBS | Task | Duration | Start | Finish | Predecessors | Complete | Remaining | Baseline start | Baseline finish | Baseline duration | Total slack | Free slack | Resources | Work | Actual work | Cost | Baseline cost | Actual cost | Ответственный |
| --- | --- | --- | --- | --- | --- | --- | --- | --- | --- | --- | --- | --- | --- | --- | --- | --- | --- | --- | --- | --- |
| 1 | 1 | **Система извлечения темпоральных знаний из текстов** | 35d? | 2017-10-02 A | 2017-11-17 |  | 17% | 29.04d? | 2017-10-02 | 2017-11-20 | 36d? | 0d |  |  | 512h | 72h | 601,000 | 589,000 | 96,000 |  |
| 2 | 1.1 | **Разработка ТЗ** | 10d | 2017-10-02 A | 2017-10-13 |  | 67% | 3.33d | 2017-10-02 | 2017-10-16 | 11d | 6d | 0d |  | 104h | 72h | 169,000 | 157,000 | 96,000 | Иванов |
| 3 | 1.1.1 | Исследование предметной области | 3d | 2017-10-02 A | 2017-10-04 |  | 33% | 2d | 2017-10-02 | 2017-10-02 | 1d | 13d |  | Иванов | 24h | 8h | 36,000 | 12,000 | 12,000 |  |
| 4 | 1.1.2 | **Планирование архитектуры проекта** | 3d | 2017-10-03 A | 2017-10-05 A | 3 | 100% |  | 2017-10-03 | 2017-10-05 | 3d |  |  |  | 32h | 32h | 36,000 | 36,000 | 36,000 |  |
| 5 | 1.1.2.1 | Планирование модулей проекта | 1d | 2017-10-03 A | 2017-10-03 A |  | 100% |  | 2017-10-03 | 2017-10-03 | 1d |  |  | Иванов; Петров | 16h | 16h | 20,000 | 20,000 | 20,000 |  |
| 6 | 1.1.2.2 | Планирование интерфейсов | 2d | 2017-10-04 A | 2017-10-05 A | 5 | 100% |  | 2017-10-04 | 2017-10-05 | 2d |  |  | Петров | 16h | 16h | 16,000 | 16,000 | 16,000 |  |
| 7 | 1.1.3 | **Создание документа** | 6d | 2017-10-06 A | 2017-10-13 | 6, 4 | 67% | 2d | 2017-10-06 | 2017-10-16 | 7d | 6d | 0d |  | 48h | 32h | 97,000 | 109,000 | 48,000 | Иванов |
| 8 | 1.1.3.1 | Создание UML диаграмм | 2d | 2017-10-06 | 2017-10-09 |  |  |  | 2017-10-06 | 2017-10-10 | 3d | 10d |  | Иванов; Лицензия на UML-редактор | 16h |  | 49,000 | 61,000 |  |  |
| 9 | 1.1.3.2 | Оформление документа | 4d | 2017-10-10 A | 2017-10-13 A | 8 | 100% |  | 2017-10-11 | 2017-10-16 | 4d |  |  | Иванов | 32h | 32h | 48,000 | 48,000 | 48,000 |  |
| 10 | 1.2 | **Кодирование** | 19d? | 2017-10-16 | 2017-11-09 | 2, 7 |  |  | 2017-10-17 | 2017-11-10 | 19d? | 3d | 0d |  | 264h |  | 264,000 | 264,000 |  |  |
| 11 | 1.2.1 | **Создание модуля загрузки данных** | 4d? | 2017-10-16 | 2017-10-19 |  |  |  | 2017-10-17 | 2017-10-20 | 4d? | 18d |  |  | 48h |  | 48,000 | 48,000 |  |  |
| 12 | 1.2.1.1 | Загрузка из файлов | 2d? | 2017-10-16 | 2017-10-17 |  |  |  | 2017-10-17 | 2017-10-18 | 2d? | 18d | 0d | Новиков | 16h |  | 16,000 | 16,000 |  |  |
| 13 | 1.2.1.2 | Загрузка данных с сайта | 2d? | 2017-10-18 | 2017-10-19 | 12, 14 |  |  | 2017-10-19 | 2017-10-20 | 2d? | 18d |  | Новиков | 16h |  | 16,000 | 16,000 |  |  |
| 14 | 1.2.1.3 | Тестирование | 2d? | 2017-10-16 | 2017-10-17 |  |  |  | 2017-10-17 | 2017-10-18 | 2d? | 18d | 0d | Королев | 16h |  | 16,000 | 16,000 |  |  |
| 15 | 1.2.2 | **Создание модуля анализа текста** | 10d? | 2017-10-16 | 2017-10-27 | 7 |  |  | 2017-10-17 | 2017-10-30 | 10d? | 6d | 0d |  | 112h |  | 112,000 | 112,000 |  |  |
| 16 | 1.2.2.1 | Анализ текста | 6d? | 2017-10-16 | 2017-10-23 |  |  |  | 2017-10-17 | 2017-10-24 | 6d? | 6d | 0d | Петров | 48h |  | 48,000 | 48,000 |  |  |
| 17 | 1.2.2.2 | Тестирование | 4d? | 2017-10-24 | 2017-10-27 | 16 |  |  | 2017-10-25 | 2017-10-30 | 4d? | 6d |  | Королев; Петров | 64h |  | 64,000 | 64,000 |  |  |
| 18 | 1.2.3 | **Создание модуля вывода результатов** | 3d? | 2017-10-30 | 2017-11-01 | 15 |  |  | 2017-10-31 | 2017-11-02 | 3d? | 6d |  |  | 40h |  | 40,000 | 40,000 |  | Петров |
| 19 | 1.2.3.1 | Вывод данных в табличном виде на форму | 1d? | 2017-10-30 | 2017-10-30 |  |  |  | 2017-10-31 | 2017-10-31 | 1d? | 6d | 0d | Петров | 8h |  | 8,000 | 8,000 |  |  |
| 20 | 1.2.3.2 | Построение графиков | 2d? | 2017-10-31 | 2017-11-01 |  |  |  | 2017-11-01 | 2017-11-02 | 2d? | 6d | 0d | Петров | 16h |  | 16,000 | 16,000 |  |  |
| 21 | 1.2.3.3 | Фильтрация данных | 2d? | 2017-10-31 | 2017-11-01 | 19 |  |  | 2017-11-01 | 2017-11-02 | 2d? | 6d | 0d | Новиков | 16h |  | 16,000 | 16,000 |  |  |
| 22 | 1.2.4 | **Создание модуля сохранение данных** | 6d? | 2017-11-02 | 2017-11-09 | 15, 21 |  |  | 2017-11-03 | 2017-11-10 | 6d? | 3d |  |  | 24h |  | 24,000 | 24,000 |  | Петров |
| 23 | 1.2.4.1 | CSV | 1d? | 2017-11-09 | 2017-11-09 |  |  |  | 2017-11-10 | 2017-11-10 | 1d? | 3d |  | Петров | 8h |  | 8,000 | 8,000 |  |  |
| 24 | 1.2.4.2 | XML | 1d? | 2017-11-02 | 2017-11-02 |  |  |  | 2017-11-03 | 2017-11-03 | 1d? | 8d |  | Новиков | 8h |  | 8,000 | 8,000 |  |  |
| 25 | 1.2.4.3 | JSON | 1d? | 2017-11-03 | 2017-11-03 |  |  |  | 2017-11-06 | 2017-11-06 | 1d? | 7d |  | Новиков | 8h |  | 8,000 | 8,000 |  |  |

| ID | WBS | Task | Duration | Start | Finish | Predecessors | Baseline start | Baseline finish | Baseline duration | Total slack | Resources | Work | Cost | Baseline cost | Ответственный |
| --- | --- | --- | --- | --- | --- | --- | --- | --- | --- | --- | --- | --- | --- | --- | --- |
| 26 | 1.2.5 | **Создание модуля отчетов** | 5d? | 2017-11-02 | 2017-11-08 | 20, 21, 15 | 2017-11-03 | 2017-11-09 | 5d? | 4d |  | 40h | 40,000 | 40,000 |  |
| 27 | 1.2.5.1 | DOCX | 3d? | 2017-11-02 | 2017-11-06 |  | 2017-11-03 | 2017-11-07 | 3d? | 6d | Петров | 24h | 24,000 | 24,000 |  |
| 28 | 1.2.5.2 | PDF | 2d? | 2017-11-07 | 2017-11-08 |  | 2017-11-08 | 2017-11-09 | 2d? | 4d | Петров | 16h | 16,000 | 16,000 |  |
| 29 | 1.3 | **Создание документации** | 6d? | 2017-11-10 | 2017-11-17 | 10 | 2017-11-13 | 2017-11-20 | 6d? | 0d |  | 144h | 168,000 | 168,000 | Иванов |
| 30 | 1.3.1 | Интсрукция пользователю | 3d? | 2017-11-10 | 2017-11-14 |  | 2017-11-13 | 2017-11-15 | 3d? | 3d | Иванов; Новиков; Петров | 72h | 84,000 | 84,000 |  |
| 31 | 1.3.2 | Инструкция программисту | 3d? | 2017-11-15 | 2017-11-17 |  | 2017-11-16 | 2017-11-20 | 3d? | 0d | Иванов; Новиков; Петров | 72h | 84,000 | 84,000 |  |
